# LMS- PP

Schedule from MS Project, 2015-06-15 to 2015-12-16.

## Calendars

- Standard: Mon-Fri 08:00-12:00, 13:00-17:00; Sat-Sun off.

## Schedule

| ID | WBS | Task | Duration | Start | Finish | Predecessors | Total slack | Free slack |
| --- | --- | --- | --- | --- | --- | --- | --- | --- |
| 1 | 1 | **Sales Learning Management System** | 133d? | 2015-06-15 | 2015-12-16 |  | 0d |  |
| 2 | 1.1 | **Phase -1** | 61d? | 2015-06-15 | 2015-09-07 |  | 0d |  |
| 3 | 1.1.1 | **Requirements** | 8d? | 2015-06-15 | 2015-06-24 |  | 0d |  |
| 4 | 1.1.1.1 | Specification Document | 7d | 2015-06-15 | 2015-06-23 |  | 0d |  |
| 5 | 1.1.1.2 | UI Story Board | 7d | 2015-06-15 | 2015-06-23 |  | 0d |  |
| 6 | 1.1.1.3 | Sign Off | 1d? | 2015-06-24 | 2015-06-24 | 4, 5 | 0d |  |
| 7 | 1.1.2 | **Analayis & Design** | 8d | 2015-06-25 | 2015-07-06 |  | 0d |  |
| 8 | 1.1.2.1 | Architecture | 2d | 2015-06-25 | 2015-06-26 | 6 | 2d |  |
| 9 | 1.1.2.2 | High level design | 3d | 2015-06-25 | 2015-06-29 | 6 | 1d |  |
| 10 | 1.1.2.3 | Database Design | 4d | 2015-06-25 | 2015-06-30 | 6 | 0d |  |
| 11 | 1.1.2.4 | Internal Review and Sign Off | 4d | 2015-07-01 | 2015-07-06 | 8, 9, 10 | 0d |  |
| 12 | 1.1.3 | **Development & testing** | 41d? | 2015-06-25 | 2015-08-20 |  | 4d |  |
| 13 | 1.1.3.1 | **UI Screens** | 10d | 2015-06-25 | 2015-07-08 |  | 10d |  |
| 14 | 1.1.3.1.1 | Mobile | 7d | 2015-06-25 | 2015-07-03 | 6 | 10d | 0d |
| 15 | 1.1.3.1.2 | Web | 5d | 2015-06-25 | 2015-07-01 | 6 | 12d | 2d |
| 16 | 1.1.3.1.3 | UI Sign off | 3d | 2015-07-06 | 2015-07-08 | 14, 15 | 10d | 0d |
| 17 | 1.1.3.2 | **Development** | 33d | 2015-07-01 | 2015-08-14 |  | 0d |  |
| 18 | 1.1.3.2.1 | **Server** | 21d | 2015-07-01 | 2015-07-29 |  | 0d |  |
| 19 | 1.1.3.2.1.1 | Server Setup | 3d | 2015-07-01 | 2015-07-03 | 11SS | 0d |  |
| 20 | 1.1.3.2.1.2 | Database | 3d | 2015-07-06 | 2015-07-08 | 19 | 0d |  |
| 21 | 1.1.3.2.1.3 | Web Services | 12d | 2015-07-09 | 2015-07-24 | 20 | 0d |  |
| 22 | 1.1.3.2.1.4 | Deployment Scripts | 3d | 2015-07-27 | 2015-07-29 | 21 | 0d |  |
| 23 | 1.1.3.2.2 | **Client** | 27d | 2015-07-09 | 2015-08-14 |  | 10d |  |
| 24 | 1.1.3.2.2.1 | **Mobile App** | 22d | 2015-07-09 | 2015-08-07 |  | 10d |  |
| 25 | 1.1.3.2.2.1.1 | Login | 2d | 2015-07-09 | 2015-07-10 | 16 | 10d | 0d |
| 26 | 1.1.3.2.2.1.2 | Updates | 10d | 2015-07-13 | 2015-07-24 | 25 | 10d | 0d |
| 27 | 1.1.3.2.2.1.3 | Courses | 10d | 2015-07-27 | 2015-08-07 | 26 | 93d |  |

| ID | WBS | Task | Duration | Start | Finish | Predecessors | Total slack | Free slack |
| --- | --- | --- | --- | --- | --- | --- | --- | --- |
| 28 | 1.1.3.2.2.2 | **Web Application** | 12d | 2015-07-30 | 2015-08-14 |  | 0d |  |
| 29 | 1.1.3.2.2.2.1 | Login | 2d | 2015-07-30 | 2015-07-31 | 22 | 0d |  |
| 30 | 1.1.3.2.2.2.2 | Courses | 5d | 2015-08-03 | 2015-08-07 | 29 | 0d |  |
| 31 | 1.1.3.2.2.2.3 | School/Profile | 5d | 2015-08-10 | 2015-08-14 | 30 | 88d |  |
| 32 | 1.1.3.3 | **Testing** | 29d? | 2015-07-13 | 2015-08-20 |  | 20d |  |
| 33 | 1.1.3.3.1 | Unit testing | 24d | 2015-07-13 | 2015-08-13 | 25 | 89d |  |
| 34 | 1.1.3.3.2 | Integration Testing | 5d | 2015-08-10 | 2015-08-14 | 26, 30 | 0d |  |
| 35 | 1.1.3.3.3 | System Testing | 3d | 2015-08-17 | 2015-08-19 | 34 | 0d |  |
| 36 | 1.1.3.3.4 | Testing Sign off | 1d? | 2015-08-20 | 2015-08-20 | 35 | 0d |  |
| 37 | 1.1.4 | **UAT** | 7d? | 2015-08-21 | 2015-08-31 |  | 0d |  |
| 38 | 1.1.4.1 | Release & Deployment | 1d? | 2015-08-21 | 2015-08-21 | 36 | 0d |  |
| 39 | 1.1.4.2 | UAT Testing | 5d | 2015-08-24 | 2015-08-28 | 38 | 0d |  |
| 40 | 1.1.4.3 | UAT Support | 5d | 2015-08-24 | 2015-08-28 | 38 | 0d |  |
| 41 | 1.1.4.4 | UAT Sign Off | 1d | 2015-08-31 | 2015-08-31 | 39, 40 | 0d |  |
| 42 | 1.1.5 | **Go Live** | 6d | 2015-08-31 | 2015-09-07 |  | 1d |  |
| 43 | 1.1.5.1 | Release to App Store | 6d | 2015-08-31 | 2015-09-07 | 41SS | 72d |  |
| 44 | 1.1.5.2 | Release to Server | 1d | 2015-09-01 | 2015-09-01 | 41 | 0d |  |
| 45 | 1.2 | **Phase -2** | 59d? | 2015-09-02 | 2015-11-23 |  | 0d |  |
| 46 | 1.2.1 | Post Production Support- Phase 1 | 22d | 2015-09-02 | 2015-10-01 | 44 | 54d |  |
| 47 | 1.2.2 | **Requirements** | 6d? | 2015-09-02 | 2015-09-09 |  | 0d |  |
| 48 | 1.2.2.1 | Specification Document | 2d | 2015-09-02 | 2015-09-03 | 44 | 0d |  |
| 49 | 1.2.2.2 | UI Story Board | 3d | 2015-09-04 | 2015-09-08 | 48 | 0d |  |
| 50 | 1.2.2.3 | UI Sign off | 1d? | 2015-09-09 | 2015-09-09 | 49 | 61d | 0d |
| 51 | 1.2.3 | **Analayis & Design** | 9d | 2015-09-10 | 2015-09-22 |  | 61d |  |
| 52 | 1.2.3.1 | Architecture | 1d | 2015-09-10 | 2015-09-10 | 50 | 61d | 0d |
| 53 | 1.2.3.2 | High level design | 3d | 2015-09-11 | 2015-09-15 | 52 | 61d | 0d |
| 54 | 1.2.3.3 | Database Design | 3d | 2015-09-16 | 2015-09-18 | 53 | 61d | 0d |
| 55 | 1.2.3.4 | Internal Review and Sign Off | 2d | 2015-09-21 | 2015-09-22 | 54 | 61d |  |

| ID | WBS | Task | Duration | Start | Finish | Predecessors | Total slack |
| --- | --- | --- | --- | --- | --- | --- | --- |
| 56 | 1.2.4 | **Development & testing** | 41d? | 2015-09-09 | 2015-11-04 |  | 0d |
| 57 | 1.2.4.1 | **UI Screens** | 8d | 2015-09-09 | 2015-09-18 |  | 0d |
| 58 | 1.2.4.1.1 | Mobile | 5d | 2015-09-09 | 2015-09-15 | 49 | 0d |
| 59 | 1.2.4.1.2 | Web | 5d | 2015-09-09 | 2015-09-15 | 49 | 0d |
| 60 | 1.2.4.1.3 | UI Sign off | 3d | 2015-09-16 | 2015-09-18 | 58, 59 | 0d |
| 61 | 1.2.4.2 | **Development** | 22d? | 2015-09-21 | 2015-10-20 |  | 0d |
| 62 | 1.2.4.2.1 | **Server** | 9d? | 2015-09-21 | 2015-10-01 |  | 0d |
| 63 | 1.2.4.2.1.1 | Database | 3d | 2015-09-21 | 2015-09-23 | 60 | 0d |
| 64 | 1.2.4.2.1.2 | Web Services | 5d | 2015-09-24 | 2015-09-30 | 63 | 0d |
| 65 | 1.2.4.2.1.3 | Deployment Scripts | 1d? | 2015-10-01 | 2015-10-01 | 64 | 0d |
| 66 | 1.2.4.2.2 | **Client** | 22d? | 2015-09-21 | 2015-10-20 |  | 0d |
| 67 | 1.2.4.2.2.1 | **Mobile App** | 22d | 2015-09-21 | 2015-10-20 |  | 0d |
| 68 | 1.2.4.2.2.1.1 | Login | 2d | 2015-09-21 | 2015-09-22 | 60 | 0d |
| 69 | 1.2.4.2.2.1.2 | Assignment | 10d | 2015-09-23 | 2015-10-06 | 68 | 0d |
| 70 | 1.2.4.2.2.1.3 | Leaderboard | 10d | 2015-10-07 | 2015-10-20 | 69 | 0d |
| 71 | 1.2.4.2.2.2 | **Web Application** | 13d | 2015-10-02 | 2015-10-20 |  | 0d |
| 72 | 1.2.4.2.2.2.1 | Assignment | 7d | 2015-10-02 | 2015-10-12 | 65 | 0d |
| 73 | 1.2.4.2.2.2.2 | Leaderboard | 6d | 2015-10-13 | 2015-10-20 | 72 | 0d |
| 74 | 1.2.4.2.2.3 | **Admin Application** | 13d? | 2015-10-02 | 2015-10-20 |  | 0d |
| 75 | 1.2.4.2.2.3.1 | Login | 1d? | 2015-10-02 | 2015-10-02 | 65 | 0d |
| 76 | 1.2.4.2.2.3.2 | Master Data | 6d | 2015-10-05 | 2015-10-12 | 75 | 0d |
| 77 | 1.2.4.2.2.3.3 | Mapping | 6d | 2015-10-13 | 2015-10-20 | 76 | 0d |
| 78 | 1.2.4.3 | **Testing** | 31d? | 2015-09-23 | 2015-11-04 |  | 20d |
| 79 | 1.2.4.3.1 | Unit testing | 24d | 2015-09-23 | 2015-10-26 | 68 | 37d |
| 80 | 1.2.4.3.2 | Integration Testing | 7d | 2015-10-21 | 2015-10-29 | 70, 73, 77 | 0d |
| 81 | 1.2.4.3.3 | System Testing | 3d | 2015-10-30 | 2015-11-03 | 80 | 0d |
| 82 | 1.2.4.3.4 | Testing Sign off | 1d? | 2015-11-04 | 2015-11-04 | 81 | 0d |

| ID | WBS | Task | Duration | Start | Finish | Predecessors | Total slack |
| --- | --- | --- | --- | --- | --- | --- | --- |
| 83 | 1.2.5 | **UAT** | 7d? | 2015-11-05 | 2015-11-13 |  | 0d |
| 84 | 1.2.5.1 | Release & Deployment | 1d? | 2015-11-05 | 2015-11-05 | 82 | 0d |
| 85 | 1.2.5.2 | UAT Testing | 5d | 2015-11-06 | 2015-11-12 | 84 | 0d |
| 86 | 1.2.5.3 | UAT Support | 5d | 2015-11-06 | 2015-11-12 | 84 | 0d |
| 87 | 1.2.5.4 | UAT Sign Off | 1d? | 2015-11-13 | 2015-11-13 | 85, 86 | 0d |
| 88 | 1.2.6 | **Go Live** | 6d | 2015-11-16 | 2015-11-23 |  | 0d |
| 89 | 1.2.6.1 | Release to App Store- Phase 2 | 6d | 2015-11-16 | 2015-11-23 | 87 | 17d |
| 90 | 1.2.6.2 | Release to Server | 1d | 2015-11-16 | 2015-11-16 | 87 | 0d |
| 91 | 1.3 | Post Production Support- phase 2 | 22d | 2015-11-17 | 2015-12-16 | 90 | 0d |
